id;typ;phase_id;phase;name;start;ende;fortschritt_pct;status;verantwortlich;abhaengigkeiten
ko;Phase;;;Konzept & Analyse
anf;Aufgabe;ko;Konzept & Analyse;Anforderungsworkshops;2026-01-05;2026-01-16;100;Fertig;Lena;
sta;Aufgabe;ko;Konzept & Analyse;Stakeholder-Interviews;2026-01-12;2026-01-23;100;Fertig;Jonas;
lh;Aufgabe;ko;Konzept & Analyse;Lastenheft;2026-01-19;2026-01-30;100;Fertig;Lena;"anf;sta"
kpi;Aufgabe;ko;Konzept & Analyse;KPI-Katalog;2026-01-26;2026-02-06;100;Fertig;Aylin;anf
fk;Meilenstein;ko;Konzept & Analyse;Freigabe Konzept;2026-02-09;;;;Lena;"lh;kpi"
dp;Phase;;;Datenplattform
arch;Aufgabe;dp;Datenplattform;Architektur-Design;2026-02-10;2026-02-20;100;Fertig;Mika;fk
dwh;Aufgabe;dp;Datenplattform;DWH-Aufbau;2026-02-23;2026-03-27;90;In Arbeit;Mika;arch
etl;Aufgabe;dp;Datenplattform;ETL-Strecken;2026-03-09;2026-04-24;70;In Arbeit;Sara;arch
api;Aufgabe;dp;Datenplattform;Quellsystem-APIs;2026-03-23;2026-04-17;55;Blockiert;Jonas;arch
dq;Aufgabe;dp;Datenplattform;Datenqualitäts-Checks;2026-04-13;2026-05-08;40;In Arbeit;Sara;etl
mp;Meilenstein;dp;Datenplattform;Plattform steht;2026-05-15;;;;Mika;"dwh;dq;api"
bv;Phase;;;Berichte & Visuals
sem;Aufgabe;bv;Berichte & Visuals;Semantisches Modell;2026-05-04;2026-05-29;65;In Arbeit;Mika;dwh
dash;Aufgabe;bv;Berichte & Visuals;Management-Dashboard;2026-06-01;2026-07-03;35;In Arbeit;Aylin;sem
dv;Aufgabe;bv;Berichte & Visuals;Deneb-Visuals;2026-06-15;2026-07-17;15;In Arbeit;Aylin;sem
ssvc;Aufgabe;bv;Berichte & Visuals;Self-Service-Berichte;2026-07-06;2026-07-31;0;Offen;Jonas;sem
uat;Aufgabe;bv;Berichte & Visuals;Fach-Review Berichte;2026-08-03;2026-08-14;0;Offen;Lena;"dash;dv;ssvc"
mb;Meilenstein;bv;Berichte & Visuals;Berichte abgenommen;2026-08-17;;;;Lena;uat
ro;Phase;;;Rollout & Betrieb
tq;Aufgabe;ro;Rollout & Betrieb;Test & QA;2026-08-17;2026-09-04;0;Offen;Sara;"mb;mp"
schu;Aufgabe;ro;Rollout & Betrieb;Schulungen;2026-09-07;2026-09-18;0;Offen;Lena;tq
doku;Aufgabe;ro;Rollout & Betrieb;Dokumentation;2026-09-07;2026-09-25;0;Offen;Jonas;tq
pilot;Aufgabe;ro;Rollout & Betrieb;Pilotbetrieb;2026-09-21;2026-10-02;0;Offen;Team;schu
gl;Meilenstein;ro;Rollout & Betrieb;Go-Live;2026-10-05;;;;Team;"pilot;doku"
hyp;Aufgabe;ro;Rollout & Betrieb;Hypercare;2026-10-05;2026-10-30;0;Offen;Team;gl
